# microsoft-project-how-to-create-your-project-plan-in-ms-project

How a schedule from MS Project changed from version to version. A marks actual dates.

## Version 1 (saved 2016-06-12)

Note of the change: add ms-project file

| ID | WBS | Task | Duration | Start | Finish | Predecessors | Total float |
| --- | --- | --- | --- | --- | --- | --- | --- |
| 1 | 1 | **Website Development** | 23d? | 2016-10-06 | 2016-11-08 |  | 0d |
| 2 | 1.1 | **ANALYSIS** | 23d? | 2016-10-06 | 2016-11-08 |  | 0d |
| 3 |  | Main Page | 5d | 2016-10-06 | 2016-10-12 |  | 13d |
| 4 |  | Content Page #1 | 3d? | 2016-10-06 | 2016-10-10 |  | 0d |
| 5 |  | Content Page #2 | 2d? | 2016-10-11 | 2016-10-12 | 4 | 0d |
| 6 |  | Content Page #3 | 0d? | 2016-10-12 | 2016-10-12 | 3 | 13d |
| 7 |  | Author Page | 2d? | 2016-10-14 | 2016-10-17 | 5 | 0d |
| 8 |  | Contact Page | 0d? | 2016-10-12 | 2016-10-12 | 6 | 13d |
| 9 |  | Search Page | 7d? | 2016-10-18 | 2016-10-27 | 7 | 0d |
| 10 |  | Order Page | 0d? | 2016-10-12 | 2016-10-12 | 8 | 18d |
| 11 |  | Tracking Page | 0d? | 2016-10-12 | 2016-10-12 | 10 | 18d |
| 12 |  | Admin Page | 8d? | 2016-10-28 | 2016-11-08 | 9 | 0d |
| 13 | 1.2 | **DESIGN** | 16d? | 2016-10-18 | 2016-11-08 |  | 0d |
| 14 |  | Main Page | 0d | 2016-10-20 | 2016-10-20 | 3, 15 | 13d |
| 15 |  | Content Page #1 | 2d | 2016-10-19 | 2016-10-20 | 4, 18 | 10d |
| 16 |  | Content Page #2 | 0d? | 2016-10-20 | 2016-10-20 | 5, 14 | 13d |
| 17 |  | Content Page #3 | 0d? | 2016-10-20 | 2016-10-20 | 6, 14, 16 | 13d |
| 18 |  | Author Page | 1d? | 2016-10-18 | 2016-10-18 | 7 | 18.5d |
| 19 |  | Contact Page | 0d? | 2016-10-19 | 2016-10-19 | 8 | 14d |
| 20 |  | Search Page | 0d | 2016-10-27 | 2016-10-27 | 9, 19 | 8d |
| 21 |  | Order Page | 0d | 2016-10-27 | 2016-10-27 | 10, 20 | 8d |
| 22 |  | Tracking Page | 0d | 2016-10-27 | 2016-10-27 | 11, 21 | 8d |
| 23 |  | Admin Page | 0d | 2016-11-08 | 2016-11-08 | 12, 22 | 0d |
| 24 | 1.3 | **DEVELOPMENT** | 15d? | 2016-10-19 | 2016-11-08 |  | 0d |
| 25 |  | Main Page | 0d | 2016-10-20 | 2016-10-20 | 14 | 13d |
| 26 |  | Content Page #1 | 1d | 2016-10-21 | 2016-10-21 | 15 | 24.5d |
| 27 |  | Content Page #2 | 0d? | 2016-10-20 | 2016-10-20 | 16 | 13d |
| 28 |  | Content Page #3 | 0d? | 2016-10-20 | 2016-10-20 | 17 | 13d |
| 29 |  | Author Page | 1d? | 2016-10-19 | 2016-10-19 | 18 | 26.5d |
| 30 |  | Contact Page | 0d? | 2016-10-19 | 2016-10-19 | 19 | 14d |
| 31 |  | Search Page | 0d | 2016-10-27 | 2016-10-27 | 20 | 8d |
| 32 |  | Order Page | 0d | 2016-10-27 | 2016-10-27 | 21 | 8d |
| 33 |  | Tracking Page | 0d | 2016-10-27 | 2016-10-27 | 22 | 8d |
| 34 |  | Admin Page | 0d | 2016-11-08 | 2016-11-08 | 23 | 0d |
| 35 | 1.4 | **TESTING** | 14d? | 2016-10-19 | 2016-11-08 |  | 0d |
| 36 |  | Main Page | 0d | 2016-10-20 | 2016-10-20 | 25 | 13d |
| 37 |  | Content Page #1 | 1d | 2016-10-24 | 2016-10-24 | 26 | 24.5d |
| 38 |  | Content Page #2 | 0d? | 2016-10-20 | 2016-10-20 | 27 | 13d |
| 39 |  | Content Page #3 | 0d? | 2016-10-20 | 2016-10-20 | 28 | 13d |
| 40 |  | Author Page | 1d? | 2016-10-20 | 2016-10-20 | 29 | 26.5d |
| 41 |  | Contact Page | 0d? | 2016-10-19 | 2016-10-19 | 30 | 14d |
| 42 |  | Search Page | 0d | 2016-10-27 | 2016-10-27 | 31 | 8d |
| 43 |  | Order Page | 0d | 2016-10-27 | 2016-10-27 | 32 | 8d |
| 44 |  | Tracking Page | 0d | 2016-10-27 | 2016-10-27 | 33 | 8d |
| 45 |  | Admin Page | 0d | 2016-11-08 | 2016-11-08 | 34 | 0d |
| 46 | 1.5 | **BUGFIX** | 15d? | 2016-10-19 | 2016-11-08 |  | 0d |
| 47 |  | Main Page | 1d? | 2016-10-20 | 2016-10-20 | 36FF | 13d |
| 48 |  | Content Page #1 | 1d? | 2016-10-24 | 2016-10-24 | 37FF | 24.5d |
| 49 |  | Content Page #2 | 1d? | 2016-10-20 | 2016-10-20 | 38FF | 13d |
| 50 |  | Content Page #3 | 1d? | 2016-10-20 | 2016-10-20 | 39FF | 13d |
| 51 |  | Author Page | 1d? | 2016-10-20 | 2016-10-20 | 40FF | 21.5d |
| 52 |  | Contact Page | 1d? | 2016-10-19 | 2016-10-19 | 41FF | 14d |
| 53 |  | Search Page | 1d? | 2016-10-27 | 2016-10-27 | 42FF | 8d |
| 54 |  | Order Page | 1d? | 2016-10-27 | 2016-10-27 | 43FF | 8d |
| 55 |  | Tracking Page | 1d? | 2016-10-27 | 2016-10-27 | 44FF | 8d |
| 56 |  | Admin Page | 1d? | 2016-11-08 | 2016-11-08 | 45FF | 0d |
| 57 | 1.6 | **MILESTONE** | 0d | 2016-11-08 | 2016-11-08 |  | 0d |
| 58 |  | Finish of Analysis Phase | 0d | 2016-11-08 | 2016-11-08 | 2 | 0d |
| 59 |  | Finish of Design Phase | 0d | 2016-11-08 | 2016-11-08 | 13 | 0d |
| 60 |  | Finish of Development Phase | 0d | 2016-11-08 | 2016-11-08 | 24 | 0d |
| 61 |  | Finish of Testing Phase | 0d | 2016-11-08 | 2016-11-08 | 35 | 0d |
| 62 |  | Finish of BugFix Phase | 0d | 2016-11-08 | 2016-11-08 | 46 | 0d |

## Version 2 (saved 2016-06-12)

Note of the change: update work

Last finish 2016-11-08 → 2016-12-28 (+50d).

Changed:

| ID | Task | Start | Finish | Duration | Total float |
| --- | --- | --- | --- | --- | --- |
| 1 | **Website Development** |  | 2016-11-08 → 2016-12-28 (+50d) | 23d? → 58d? |  |
| 2 | **ANALYSIS** |  | 2016-11-08 → 2016-11-09 (+1d) | 23d? → 24d? | 0d → 1d |
| 3 | Main Page |  | 2016-10-12 → 2016-10-20 (+8d) | 5d → 10d | 13d → 1d |
| 6 | Content Page #3 | 2016-10-12 → 2016-10-21 (+9d) | 2016-10-12 → 2016-10-24 (+12d) | 0d? → 2d? | 13d → 1d |
| 8 | Contact Page | 2016-10-12 → 2016-10-25 (+13d) | 2016-10-12 → 2016-10-26 (+14d) | 0d? → 2d? | 13d → 1d |
| 10 | Order Page | 2016-10-12 → 2016-10-27 (+15d) | 2016-10-12 → 2016-11-03 (+22d) | 0d? → 6d? | 18d → 2d |
| 11 | Tracking Page | 2016-10-12 → 2016-11-04 (+23d) | 2016-10-12 → 2016-11-09 (+28d) | 0d? → 4d? | 18d → 2d |
| 13 | **DESIGN** |  | 2016-11-08 → 2016-11-28 (+20d) | 16d? → 29d? | 0d → 13d |
| 14 | Main Page | 2016-10-20 → 2016-10-21 (+1d) | 2016-10-20 → 2016-10-26 (+6d) | 0d → 4d | 13d → 27d |
| 16 | Content Page #2 | 2016-10-20 → 2016-10-27 (+7d) | 2016-10-20 → 2016-10-27 (+7d) | 0d? → 1d? | 13d → 33d |
| 17 | Content Page #3 | 2016-10-20 → 2016-10-28 (+8d) | 2016-10-20 → 2016-10-28 (+8d) | 0d? → 1d? | 13d → 33d |
| 19 | Contact Page | 2016-10-19 → 2016-11-04 (+16d) | 2016-10-19 → 2016-11-04 (+16d) | 0d? → 1d? | 14d → 0d |
| 20 | Search Page | 2016-10-27 → 2016-11-07 (+11d) | 2016-10-27 → 2016-11-10 (+14d) | 0d → 4d | 8d → 0d |
| 21 | Order Page | 2016-10-27 → 2016-11-14 (+18d) | 2016-10-27 → 2016-11-16 (+20d) | 0d → 3d | 8d → 0d |
| 22 | Tracking Page | 2016-10-27 → 2016-11-17 (+21d) | 2016-10-27 → 2016-11-21 (+25d) | 0d → 3d | 8d → 0d |
| 23 | Admin Page | 2016-11-08 → 2016-11-22 (+14d) | 2016-11-08 → 2016-11-28 (+20d) | 0d → 5d |  |
| 24 | **DEVELOPMENT** |  | 2016-11-08 → 2016-12-21 (+43d) | 15d? → 45d? | 0d → 4d |
| 25 | Main Page | 2016-10-20 → 2016-10-27 (+7d) | 2016-10-20 → 2016-11-14 (+25d) | 0d → 12d | 13d → 27d |
| 27 | Content Page #2 | 2016-10-20 → 2016-10-28 (+8d) | 2016-10-20 → 2016-11-02 (+13d) | 0d? → 4d? | 13d → 34d |
| 28 | Content Page #3 | 2016-10-20 → 2016-10-31 (+11d) | 2016-10-20 → 2016-11-03 (+14d) | 0d? → 4d? | 13d → 33d |
| 30 | Contact Page | 2016-10-19 → 2016-11-07 (+19d) | 2016-10-19 → 2016-11-09 (+21d) | 0d? → 3d? | 14d → 29d |
| 31 | Search Page | 2016-10-27 → 2016-11-14 (+18d) | 2016-10-27 → 2016-12-01 (+35d) | 0d → 14d | 8d → 14d |
| 32 | Order Page | 2016-10-27 → 2016-11-17 (+21d) | 2016-10-27 → 2016-12-01 (+35d) | 0d → 11d | 8d → 14d |
| 33 | Tracking Page | 2016-10-27 → 2016-11-22 (+26d) | 2016-10-27 → 2016-11-28 (+32d) | 0d → 5d | 8d → 17d |
| 34 | Admin Page | 2016-11-08 → 2016-11-29 (+21d) | 2016-11-08 → 2016-12-21 (+43d) | 0d → 17d |  |
| 35 | **TESTING** | 2016-10-19 → 2016-10-20 (+1d) | 2016-11-08 → 2016-12-28 (+50d) | 14d? → 49d? |  |
| 36 | Main Page | 2016-10-20 → 2016-11-15 (+26d) | 2016-10-20 → 2016-11-17 (+28d) | 0d → 3d | 13d → 29d |
| 38 | Content Page #2 | 2016-10-20 → 2016-11-03 (+14d) | 2016-10-20 → 2016-11-03 (+14d) | 0d? → 1d? | 13d → 38d |
| 39 | Content Page #3 | 2016-10-20 → 2016-11-04 (+15d) | 2016-10-20 → 2016-11-04 (+15d) | 0d? → 1d? | 13d → 37d |
| 41 | Contact Page | 2016-10-19 → 2016-11-10 (+22d) | 2016-10-19 → 2016-11-10 (+22d) | 0d? → 1d? | 14d → 33d |
| 42 | Search Page | 2016-10-27 → 2016-12-02 (+36d) | 2016-10-27 → 2016-12-07 (+41d) | 0d → 4d | 8d → 15d |
| 43 | Order Page | 2016-10-27 → 2016-12-02 (+36d) | 2016-10-27 → 2016-12-06 (+40d) | 0d → 3d | 8d → 16d |
| 44 | Tracking Page | 2016-10-27 → 2016-11-29 (+33d) | 2016-10-27 → 2016-11-30 (+34d) | 0d → 1.5d | 8d → 20.5d |
| 45 | Admin Page | 2016-11-08 → 2016-12-22 (+44d) | 2016-11-08 → 2016-12-28 (+50d) | 0d → 5d |  |
| 46 | **BUGFIX** | 2016-10-19 → 2016-10-20 (+1d) | 2016-11-08 → 2016-12-28 (+50d) | 15d? → 49d? |  |
| 47 | Main Page | 2016-10-20 → 2016-11-17 (+28d) | 2016-10-20 → 2016-11-17 (+28d) |  | 13d → 29d |
| 49 | Content Page #2 | 2016-10-20 → 2016-11-03 (+14d) | 2016-10-20 → 2016-11-03 (+14d) |  | 13d → 38d |
| 50 | Content Page #3 | 2016-10-20 → 2016-11-04 (+15d) | 2016-10-20 → 2016-11-04 (+15d) |  | 13d → 37d |
| 52 | Contact Page | 2016-10-19 → 2016-11-10 (+22d) | 2016-10-19 → 2016-11-10 (+22d) |  | 14d → 33d |
| 53 | Search Page | 2016-10-27 → 2016-12-07 (+41d) | 2016-10-27 → 2016-12-07 (+41d) |  | 8d → 15d |
| 54 | Order Page | 2016-10-27 → 2016-12-06 (+40d) | 2016-10-27 → 2016-12-06 (+40d) |  | 8d → 16d |
| 55 | Tracking Page | 2016-10-27 → 2016-11-29 (+33d) | 2016-10-27 → 2016-11-30 (+34d) |  | 8d → 20.5d |
| 56 | Admin Page | 2016-11-08 → 2016-12-28 (+50d) | 2016-11-08 → 2016-12-28 (+50d) |  |  |
| 57 | **MILESTONE** | 2016-11-08 → 2016-11-09 (+1d) | 2016-11-08 → 2016-12-28 (+50d) | 0d → 34d |  |
| 58 | Finish of Analysis Phase | 2016-11-08 → 2016-11-09 (+1d) | 2016-11-08 → 2016-11-09 (+1d) |  | 0d → 29d |
| 59 | Finish of Design Phase | 2016-11-08 → 2016-11-28 (+20d) | 2016-11-08 → 2016-11-28 (+20d) |  | 0d → 17d |
| 60 | Finish of Development Phase | 2016-11-08 → 2016-12-21 (+43d) | 2016-11-08 → 2016-12-21 (+43d) |  | 0d → 5d |
| 61 | Finish of Testing Phase | 2016-11-08 → 2016-12-28 (+50d) | 2016-11-08 → 2016-12-28 (+50d) |  |  |
| 62 | Finish of BugFix Phase | 2016-11-08 → 2016-12-28 (+50d) | 2016-11-08 → 2016-12-28 (+50d) |  |  |

## Version 3 (saved 2016-06-12)

Note of the change: asign development, testing tasks

Last finish 2016-12-28 → 2016-12-23 (-5d).

Changed:

| ID | Task | Start | Finish | Duration | Total float | Predecessors | Other |
| --- | --- | --- | --- | --- | --- | --- | --- |
| 1 | **Website Development** |  | 2016-12-28 → 2016-12-23 (-5d) | 58d? → 55d? |  |  |  |
| 13 | **DESIGN** |  | 2016-11-28 → 2016-11-23 (-5d) | 29d? → 26d? | 13d → 0d |  |  |
| 19 | Contact Page | 2016-11-04 → 2016-10-31 (-4d) | 2016-11-04 → 2016-10-31 (-4d) |  |  | 8 → 8, 17 |  |
| 20 | Search Page | 2016-11-07 → 2016-11-01 (-6d) | 2016-11-10 → 2016-11-07 (-3d) |  |  |  |  |
| 21 | Order Page | 2016-11-14 → 2016-11-08 (-6d) | 2016-11-16 → 2016-11-10 (-6d) |  |  |  |  |
| 22 | Tracking Page | 2016-11-17 → 2016-11-14 (-3d) | 2016-11-21 → 2016-11-16 (-5d) |  |  |  |  |
| 23 | Admin Page | 2016-11-22 → 2016-11-17 (-5d) | 2016-11-28 → 2016-11-23 (-5d) |  |  |  |  |
| 24 | **DEVELOPMENT** | 2016-10-19 → 2016-10-21 (+2d) | 2016-12-21 → 2016-12-16 (-5d) | 45d? → 40d? |  |  |  |
| 25 | Main Page |  |  |  | 27d → 26d |  | resources none → Joe |
| 26 | Content Page #1 |  | 2016-10-21 → 2016-10-28 (+7d) | 1d → 6d | 41d → 38d |  | resources none → Nick |
| 27 | Content Page #2 |  |  |  | 34d → 32d |  | resources none → Justin |
| 28 | Content Page #3 |  | 2016-11-03 → 2016-11-07 (+4d) |  | 33d → 30d |  | resources none → Lisa |
| 29 | Author Page | 2016-10-19 → 2016-10-31 (+12d) | 2016-10-19 → 2016-11-02 (+14d) | 1d? → 3d? | 14d → 35d | 18 → 18, 26 | resources none → Nick |
| 30 | Contact Page | 2016-11-07 → 2016-11-03 (-4d) | 2016-11-09 → 2016-11-07 (-2d) |  | 29d → 32d | 19 → 19, 27 | resources none → Justin |
| 31 | Search Page | 2016-11-14 → 2016-11-08 (-6d) | 2016-12-01 → 2016-11-29 (-2d) |  | 14d → 4.5d |  | resources none → Nick |
| 32 | Order Page | 2016-11-17 → 2016-11-14 (-3d) | 2016-12-01 → 2016-11-29 (-2d) |  | 14d → 13.5d |  | resources none → Justin |
| 33 | Tracking Page | 2016-11-22 → 2016-11-21 (-1d) | 2016-11-28 → 2016-11-29 (+1d) |  | 17d → 16d |  | resources none → Lisa |
| 34 | Admin Page | 2016-11-29 → 2016-11-24 (-5d) | 2016-12-21 → 2016-12-16 (-5d) |  |  |  | resources none → Joe |
| 35 | **TESTING** | 2016-10-20 → 2016-10-31 (+11d) | 2016-12-28 → 2016-12-23 (-5d) | 49d? → 39d? |  |  |  |
| 36 | Main Page |  |  |  | 29d → 26d |  | resources none → Richard |
| 37 | Content Page #1 | 2016-10-24 → 2016-10-31 (+7d) | 2016-10-24 → 2016-11-01 (+8d) | 1d → 1.5d | 46d → 37.5d |  | resources none → Richard |
| 38 | Content Page #2 |  |  |  | 38d → 35d |  | resources none → Richard |
| 39 | Content Page #3 | 2016-11-04 → 2016-11-08 (+4d) | 2016-11-04 → 2016-11-08 (+4d) |  | 37d → 32d |  | resources none → Richard |
| 40 | Author Page | 2016-10-20 → 2016-11-09 (+20d) | 2016-10-20 → 2016-11-09 (+20d) |  | 48d → 30d | 29 → 29, 39 | resources none → Richard |
| 41 | Contact Page |  |  |  | 33d → 30d | 30 → 30, 40 | resources none → Richard |
| 42 | Search Page | 2016-12-02 → 2016-11-30 (-2d) | 2016-12-07 → 2016-12-05 (-2d) |  | 15d → 14d |  | resources none → Richard |
| 43 | Order Page | 2016-12-02 → 2016-12-06 (+4d) | 2016-12-06 → 2016-12-13 (+7d) |  | 16d → 6.5d | 32 → 32, 42 | resources none → Richard |
| 44 | Tracking Page | 2016-11-29 → 2016-12-14 (+15d) | 2016-11-30 → 2016-12-15 (+15d) |  | 20.5d → 6.5d | 33 → 33, 43 | resources none → Richard |
| 45 | Admin Page | 2016-12-22 → 2016-12-19 (-3d) | 2016-12-28 → 2016-12-23 (-5d) |  |  |  | resources none → Richard |
| 46 | **BUGFIX** | 2016-10-20 → 2016-11-03 (+14d) | 2016-12-28 → 2016-12-23 (-5d) | 49d? → 36d? |  |  |  |
| 47 | Main Page | 2016-11-17 → 2016-11-16 (-1d) |  | 1d? → 2d? | 29d → 26d |  | resources none → Joe |
| 48 | Content Page #1 | 2016-10-24 → 2016-11-03 (+10d) | 2016-10-24 → 2016-11-03 (+10d) |  | 12d → 35d | 37FF → 37FF, 29 | resources none → Nick |
| 49 | Content Page #2 |  |  |  | 38d → 35d |  | resources none → Justin |
| 50 | Content Page #3 | 2016-11-04 → 2016-11-08 (+4d) | 2016-11-04 → 2016-11-08 (+4d) |  | 37d → 30d |  | resources none → Lisa |
| 51 | Author Page | 2016-10-20 → 2016-11-09 (+20d) | 2016-10-20 → 2016-11-09 (+20d) |  | 14d → 31d |  | resources none → Nick [50%] |
| 52 | Contact Page |  |  |  | 33d → 30d |  | resources none → Justin [50%] |
| 53 | Search Page | 2016-12-07 → 2016-12-01 (-6d) | 2016-12-07 → 2016-12-05 (-2d) | 1d? → 3d? | 15d → 14d |  | resources none → Nick |
| 54 | Order Page | 2016-12-06 → 2016-12-12 (+6d) | 2016-12-06 → 2016-12-13 (+7d) | 1d? → 2d? | 16d → 8d |  | resources none → Justin |
| 55 | Tracking Page | 2016-11-29 → 2016-12-14 (+15d) | 2016-11-30 → 2016-12-15 (+15d) |  | 20.5d → 4.5d |  | resources none → Lisa |
| 56 | Admin Page | 2016-12-28 → 2016-12-20 (-8d) | 2016-12-28 → 2016-12-23 (-5d) | 1d? → 4d? |  |  | resources none → Joe |
| 57 | **MILESTONE** |  | 2016-12-28 → 2016-12-23 (-5d) | 34d → 31d |  |  |  |
| 59 | Finish of Design Phase | 2016-11-28 → 2016-11-23 (-5d) | 2016-11-28 → 2016-11-23 (-5d) |  | 17d → 22d |  |  |
| 60 | Finish of Development Phase | 2016-12-21 → 2016-12-16 (-5d) | 2016-12-21 → 2016-12-16 (-5d) |  |  |  |  |
| 61 | Finish of Testing Phase | 2016-12-28 → 2016-12-23 (-5d) | 2016-12-28 → 2016-12-23 (-5d) |  |  |  |  |
| 62 | Finish of BugFix Phase | 2016-12-28 → 2016-12-23 (-5d) | 2016-12-28 → 2016-12-23 (-5d) |  |  |  |  |

## Version 4 (saved 2016-06-12)

Note of the change: assign bug-fix tasks

Last finish stays 2016-12-23.

Changed:

| ID | Task | Start | Finish | Total float | Predecessors |
| --- | --- | --- | --- | --- | --- |
| 30 | Contact Page | 2016-11-03 → 2016-11-04 (+1d) | 2016-11-07 → 2016-11-08 (+1d) | 32d → 31d | 19, 27 → 19, 27, 49 |
| 51 | Author Page | 2016-11-09 → 2016-11-30 (+21d) | 2016-11-09 → 2016-11-30 (+21d) | 31d → 17d | 40FF → 40FF, 31 |

## Version 5 (saved 2016-06-12)

Note of the change: utilize for John

Last finish stays 2016-12-23.

Changed:

| ID | Task | Start | Finish | Duration | Total float | Predecessors | Other |
| --- | --- | --- | --- | --- | --- | --- | --- |
| 24 | **DEVELOPMENT** | 2016-10-21 → 2016-10-25 (+4d) |  | 40d? → 38d? |  |  |  |
| 25 | Main Page | 2016-10-27 → 2016-11-02 (+6d) | 2016-11-14 → 2016-11-18 (+4d) |  | 26d → 22d |  | constraint none → start no earlier than 2016-11-02 |
| 26 | Content Page #1 | 2016-10-21 → 2016-10-25 (+4d) | 2016-10-28 → 2016-11-01 (+4d) |  | 38d → 33d |  | constraint none → start no earlier than 2016-10-25 |
| 29 | Author Page | 2016-10-31 → 2016-11-02 (+2d) | 2016-11-02 → 2016-11-04 (+2d) |  | 35d → 33d |  |  |
| 30 | Contact Page |  | 2016-11-08 → 2016-11-09 (+1d) |  | 31d → 30.5d |  |  |
| 35 | **TESTING** | 2016-10-31 → 2016-11-02 (+2d) |  | 39d? → 37d? |  |  |  |
| 36 | Main Page | 2016-11-15 → 2016-11-21 (+6d) | 2016-11-17 → 2016-11-23 (+6d) |  | 26d → 22d |  |  |
| 37 | Content Page #1 | 2016-10-31 → 2016-11-02 (+2d) | 2016-11-01 → 2016-11-03 (+2d) |  | 37.5d → 35.5d |  |  |
| 38 | Content Page #2 |  | 2016-11-03 → 2016-11-04 (+1d) |  | 31d → 34.5d | 27 → 27, 37 |  |
| 46 | **BUGFIX** |  |  | 36d? → 35.5d? |  |  |  |
| 47 | Main Page | 2016-11-16 → 2016-11-22 (+6d) | 2016-11-17 → 2016-11-23 (+6d) |  | 26d → 22d |  |  |
| 48 | Content Page #1 | 2016-11-03 → 2016-11-07 (+4d) | 2016-11-03 → 2016-11-07 (+4d) |  | 35d → 33d |  |  |
| 49 | Content Page #2 |  | 2016-11-03 → 2016-11-04 (+1d) |  | 35d → 34.5d |  |  |

## Version 6 (saved 2016-06-12)

Note of the change: utilization of Justin

Last finish stays 2016-12-23.

Changed:

| ID | Task | Start | Finish | Duration | Total float | Predecessors | Other |
| --- | --- | --- | --- | --- | --- | --- | --- |
| 27 | Content Page #2 | 2016-10-28 → 2016-11-14 (+17d) | 2016-11-02 → 2016-11-17 (+15d) |  | 32d → 8.5d |  | constraint none → start no earlier than 2016-11-12 |
| 30 | Contact Page | 2016-11-04 → 2016-12-07 (+33d) | 2016-11-09 → 2016-12-09 (+30d) |  | 30.5d → 9d |  |  |
| 32 | Order Page | 2016-11-14 → 2016-11-18 (+4d) | 2016-11-29 → 2016-12-05 (+6d) |  | 11.5d → 7.5d | 21 → 21, 27 |  |
| 38 | Content Page #2 | 2016-11-03 → 2016-11-18 (+15d) | 2016-11-04 → 2016-11-18 (+14d) |  | 34.5d → 21d |  |  |
| 41 | Contact Page | 2016-11-10 → 2016-12-15 (+35d) | 2016-11-10 → 2016-12-16 (+36d) |  | 30d → 5.5d | 30, 40 → 30, 40, 44 |  |
| 46 | **BUGFIX** | 2016-11-03 → 2016-11-07 (+4d) |  | 35.5d? → 34d? |  |  |  |
| 49 | Content Page #2 | 2016-11-03 → 2016-12-06 (+33d) | 2016-11-04 → 2016-12-06 (+32d) |  | 34.5d → 9d | 38FF → 38FF, 32 |  |
| 52 | Contact Page | 2016-11-10 → 2016-12-15 (+35d) | 2016-11-10 → 2016-12-16 (+36d) |  | 30d → 5.5d |  |  |

## Version 7 (saved 2016-06-15)

Note of the change: Utilization of Lisa && Richard

Last finish stays 2016-12-23.

Changed:

| ID | Task | Start | Finish | Duration | Total float | Predecessors | Other |
| --- | --- | --- | --- | --- | --- | --- | --- |
| 28 | Content Page #3 | 2016-10-31 → 2016-11-16 (+16d) | 2016-11-07 → 2016-11-23 (+16d) |  | 30d → 19d |  | constraint none → start no earlier than 2016-11-16 |
| 33 | Tracking Page | 2016-11-21 → 2016-12-05 (+14d) | 2016-11-29 → 2016-12-13 (+14d) |  | 12.5d → 2.5d |  | constraint none → start no earlier than 2016-12-01 |
| 35 | **TESTING** | 2016-11-02 → 2016-11-04 (+2d) |  | 37d? → 35d? |  |  |  |
| 37 | Content Page #1 | 2016-11-02 → 2016-11-04 (+2d) | 2016-11-03 → 2016-11-07 (+4d) |  | 35.5d → 28.5d |  | constraint none → start no earlier than 2016-11-04 |
| 39 | Content Page #3 | 2016-11-08 → 2016-11-28 (+20d) | 2016-11-08 → 2016-11-28 (+20d) |  | 32d → 17d |  | constraint none → start no earlier than 2016-11-26 |
| 40 | Author Page | 2016-11-09 → 2016-11-29 (+20d) | 2016-11-09 → 2016-11-29 (+20d) |  | 30d → 17d |  | constraint none → start no earlier than 2016-11-17 |
| 50 | Content Page #3 | 2016-11-08 → 2016-11-28 (+20d) | 2016-11-08 → 2016-11-28 (+20d) |  | 30d → 17d | 39FF → 39FF, 28 | constraint none → start no earlier than 2016-11-16 |

## Version 8 (saved 2016-06-15)

Note of the change: calculate saved cost of project && set baseline

Last finish stays 2016-12-23.

Changed:

| ID | Task | Other |
| --- | --- | --- |
| 1 | **Website Development** | baseline start none → 2016-10-06; baseline finish none → 2016-12-23 |
| 2 | **ANALYSIS** | baseline start none → 2016-10-06; baseline finish none → 2016-11-09 |
| 3 | Main Page | baseline start none → 2016-10-06; baseline finish none → 2016-10-20 |
| 4 | Content Page #1 | baseline start none → 2016-10-06; baseline finish none → 2016-10-10 |
| 5 | Content Page #2 | baseline start none → 2016-10-11; baseline finish none → 2016-10-12 |
| 6 | Content Page #3 | baseline start none → 2016-10-21; baseline finish none → 2016-10-24 |
| 7 | Author Page | baseline start none → 2016-10-14; baseline finish none → 2016-10-17 |
| 8 | Contact Page | baseline start none → 2016-10-25; baseline finish none → 2016-10-26 |
| 9 | Search Page | baseline start none → 2016-10-18; baseline finish none → 2016-10-27 |
| 10 | Order Page | baseline start none → 2016-10-27; baseline finish none → 2016-11-03 |
| 11 | Tracking Page | baseline start none → 2016-11-04; baseline finish none → 2016-11-09 |
| 12 | Admin Page | baseline start none → 2016-10-28; baseline finish none → 2016-11-08 |
| 13 | **DESIGN** | baseline start none → 2016-10-18; baseline finish none → 2016-11-23 |
| 14 | Main Page | baseline start none → 2016-10-21; baseline finish none → 2016-10-26 |
| 15 | Content Page #1 | baseline start none → 2016-10-19; baseline finish none → 2016-10-20 |
| 16 | Content Page #2 | baseline start none → 2016-10-27; baseline finish none → 2016-10-27 |
| 17 | Content Page #3 | baseline start none → 2016-10-28; baseline finish none → 2016-10-28 |
| 18 | Author Page | baseline start none → 2016-10-18; baseline finish none → 2016-10-18 |
| 19 | Contact Page | baseline start none → 2016-10-31; baseline finish none → 2016-10-31 |
| 20 | Search Page | baseline start none → 2016-11-01; baseline finish none → 2016-11-07 |
| 21 | Order Page | baseline start none → 2016-11-08; baseline finish none → 2016-11-10 |
| 22 | Tracking Page | baseline start none → 2016-11-14; baseline finish none → 2016-11-16 |
| 23 | Admin Page | baseline start none → 2016-11-17; baseline finish none → 2016-11-23 |
| 24 | **DEVELOPMENT** | baseline start none → 2016-10-25; baseline finish none → 2016-12-16 |
| 25 | Main Page | baseline start none → 2016-11-02; baseline finish none → 2016-11-18 |
| 26 | Content Page #1 | baseline start none → 2016-10-25; baseline finish none → 2016-11-01 |
| 27 | Content Page #2 | baseline start none → 2016-11-14; baseline finish none → 2016-11-17 |
| 28 | Content Page #3 | baseline start none → 2016-11-16; baseline finish none → 2016-11-23 |
| 29 | Author Page | baseline start none → 2016-11-02; baseline finish none → 2016-11-04 |
| 30 | Contact Page | baseline start none → 2016-12-07; baseline finish none → 2016-12-09 |
| 31 | Search Page | baseline start none → 2016-11-08; baseline finish none → 2016-11-29 |
| 32 | Order Page | baseline start none → 2016-11-18; baseline finish none → 2016-12-05 |
| 33 | Tracking Page | baseline start none → 2016-12-05; baseline finish none → 2016-12-13 |
| 34 | Admin Page | baseline start none → 2016-11-24; baseline finish none → 2016-12-16 |
| 35 | **TESTING** | baseline start none → 2016-11-04; baseline finish none → 2016-12-23 |
| 36 | Main Page | baseline start none → 2016-11-21; baseline finish none → 2016-11-23 |
| 37 | Content Page #1 | baseline start none → 2016-11-04; baseline finish none → 2016-11-07 |
| 38 | Content Page #2 | baseline start none → 2016-11-18; baseline finish none → 2016-11-18 |
| 39 | Content Page #3 | baseline start none → 2016-11-28; baseline finish none → 2016-11-28 |
| 40 | Author Page | baseline start none → 2016-11-29; baseline finish none → 2016-11-29 |
| 41 | Contact Page | baseline start none → 2016-12-15; baseline finish none → 2016-12-16 |
| 42 | Search Page | baseline start none → 2016-11-30; baseline finish none → 2016-12-05 |
| 43 | Order Page | baseline start none → 2016-12-06; baseline finish none → 2016-12-13 |
| 44 | Tracking Page | baseline start none → 2016-12-14; baseline finish none → 2016-12-15 |
| 45 | Admin Page | baseline start none → 2016-12-19; baseline finish none → 2016-12-23 |
| 46 | **BUGFIX** | baseline start none → 2016-11-07; baseline finish none → 2016-12-23 |
| 47 | Main Page | baseline start none → 2016-11-22; baseline finish none → 2016-11-23 |
| 48 | Content Page #1 | baseline start none → 2016-11-07; baseline finish none → 2016-11-07 |
| 49 | Content Page #2 | baseline start none → 2016-12-06; baseline finish none → 2016-12-06 |
| 50 | Content Page #3 | baseline start none → 2016-11-28; baseline finish none → 2016-11-28 |
| 51 | Author Page | baseline start none → 2016-11-30; baseline finish none → 2016-11-30 |
| 52 | Contact Page | baseline start none → 2016-12-15; baseline finish none → 2016-12-16 |
| 53 | Search Page | baseline start none → 2016-12-01; baseline finish none → 2016-12-05 |
| 54 | Order Page | baseline start none → 2016-12-12; baseline finish none → 2016-12-13 |
| 55 | Tracking Page | baseline start none → 2016-12-14; baseline finish none → 2016-12-15 |
| 56 | Admin Page | baseline start none → 2016-12-20; baseline finish none → 2016-12-23 |
| 57 | **MILESTONE** | baseline start none → 2016-11-09; baseline finish none → 2016-12-23 |
| 58 | Finish of Analysis Phase | baseline start none → 2016-11-09; baseline finish none → 2016-11-09 |
| 59 | Finish of Design Phase | baseline start none → 2016-11-23; baseline finish none → 2016-11-23 |
| 60 | Finish of Development Phase | baseline start none → 2016-12-16; baseline finish none → 2016-12-16 |
| 61 | Finish of Testing Phase | baseline start none → 2016-12-23; baseline finish none → 2016-12-23 |
| 62 | Finish of BugFix Phase | baseline start none → 2016-12-23; baseline finish none → 2016-12-23 |
